How a schedule from an exported table changed from version to version. A marks actual dates.

## Version 1 (saved 2016-08-13)

Note of the change: 添加项目文件。

| Task | Start | Finish |
| --- | --- | --- |
| 项目范围规划 | 2007-01-01T00:00:00 | 2007-01-10T00:00:00 |
| 确定项目范围 | 2007-01-01T00:00:00 | 2007-01-01T23:23:59 |
| 获得项目所需资金 | 2007-01-02T00:00:00 | 2007-01-03T23:23:59 |
| 定义预备资源 | 2007-01-04T00:00:00 | 2007-01-05T23:23:59 |
| 获得核心资源 | 2007-01-08T00:00:00 | 2007-01-09T23:23:59 |
| 完成项目范围规划 | 2007-01-10T00:00:00 | 2007-01-10T00:00:00 |
| 分析/软件需求 | 2007-01-11T00:00:00 | 2007-02-07T00:00:00 |
| 行为需求分析 | 2007-01-11T00:00:00 | 2007-01-18T23:23:59 |
| 起草初步的软件规范 | 2007-01-19T00:00:00 | 2007-01-24T23:23:59 |
| 制定初步预算 | 2007-01-25T00:00:00 | 2007-01-29T23:23:59 |
| 工作组共同审阅软件规范/预算 | 2007-01-30T00:00:00 | 2007-01-30T23:23:59 |
| 根据反馈修改软件规范 | 2007-01-31T00:00:00 | 2007-01-31T23:23:59 |
| 制定交付期限 | 2007-02-01T00:00:00 | 2007-02-01T23:23:59 |
| 获得开展后续工作的批准(概念、期限和预算) | 2007-02-02T00:00:00 | 2007-02-02T23:23:59 |
| 获得所需资源 | 2007-02-05T00:00:00 | 2007-02-06T23:23:59 |
| 完成分析工作 | 2007-02-07T00:00:00 | 2007-02-07T00:00:00 |
| 设计 | 2007-02-08T00:00:00 | 2007-03-08T00:00:00 |
| 审阅初步的软件规范 | 2007-02-08T00:00:00 | 2007-02-12T23:23:59 |
| 制定功能规范 | 2007-02-13T00:00:00 | 2007-02-20T23:23:59 |
| 根据功能规范开发原型 | 2007-02-21T00:00:00 | 2007-02-27T23:23:59 |

## Version 2 (saved 2016-08-15)

Note of the change: 尝试建立泛型的树生成工具

Last finish 2007-03-08 → 2007-04-26 (+49d).

Added:

| Task | Start | Finish |
| --- | --- | --- |
| 审阅功能规范 | 2007-02-28T00:00:00 | 2007-03-02T23:23:59 |
| 根据反馈修改功能规范 | 2007-03-05T00:00:00 | 2007-03-06T23:23:59 |
| 获得开展后续工作的批准 | 2007-03-07T00:00:00 | 2007-03-07T23:23:59 |
| 完成设计工作 | 2007-03-08T00:00:00 | 2007-03-08T00:00:00 |
| 开发 | 2007-03-09T00:00:00 | 2007-04-26T00:00:00 |

Removed: 确定项目范围; 获得项目所需资金; 定义预备资源; 获得核心资源; 完成项目范围规划
